# EPM Live - Roll Out Plan

Schedule from MS Project, 2015-02-09 to 2015-09-30, status date 2015-03-24, A marks actual dates.

## Calendars

- Standard: Mon-Fri 08:00-12:00, 13:00-17:00; Sat-Sun off.

## Resources

| Resource |
| --- |
| Colleen Loftus |
| Walter Holt |
| Courtney Torres |
| Mr. A. Schenck |
| Goldschmitt / Randle Holloway |
| Goldschmitt |
| Chandler Grice |
| Randy Jacobs |
| Goldschmitt; Randle Holloway |
| Justin Heykoop |
| Randle Holloway |
| William Grenzer |
| William Grenzer; Goldschmitt |
| Carl Young |
| Kenton Waddell |
| John Evans |
| George Simmons |
| Cae |
| Randle Holloway; Goldschmitt |
| Journey Stewart |
| CCB Members |
| Upland - EPM Live |
| Mr. Bruce Watkins |
| Jennifer Singley |
| GeMSIS representative |
| Project Representative |
| Keyona McFarland |
| Louella Simonetti |
| DISA DISANet Representative |
| Carmin Mains |
| Mr. |
| DATELine DISA Representative |
| Ms. Karen Winkler |
| Karen Winkler |
| James Mette |
| Marcie Fort |
| Sarah Lambert |

## Schedule

| ID | WBS | Task | Type | Duration | Start | Finish | Complete | Remaining | Baseline start | Baseline finish | Baseline duration | Total slack | Resources | Work | Actual work |
| --- | --- | --- | --- | --- | --- | --- | --- | --- | --- | --- | --- | --- | --- | --- | --- |
| 1 | 1 | **Contracting** |  | 42d | 2015-02-26 A | 2015-04-24 | 42% | 24.34d | 2015-02-26 | 2015-04-24 | 42d | 0d |  | 588h | 206h |
| 2 | 1.1 | Order VDC | manual | 2d | 2015-03-13 A | 2015-03-16 A | 100% |  | 2015-03-13 | 2015-03-16 | 2d |  |  |  |  |
| 3 | 1.2 | MIPR Funding to MilCloud Provisioning - VDC | manual | 5d | 2015-03-23 | 2015-03-27 |  |  | 2015-03-23 | 2015-03-27 | 5d |  | Colleen Loftus | 40h |  |
| 4 | 1.3 | Contract Modification 2 Procurement Documents | manual | 9d | 2015-02-26 A | 2015-03-10 A | 100% |  | 2015-02-26 | 2015-03-10 | 9d |  | James Mette | 72h | 72h |
| 5 | 1.4 | Contract Modification 2 Submitted in KT | manual | 3d | 2015-03-23 A | 2015-03-25 A | 100% |  | 2015-03-23 | 2015-03-25 | 3d |  | Colleen Loftus | 24h | 24h |
| 6 | 1.5 | Contract Modification 2 Funded | manual | 5d | 2015-03-23 | 2015-03-27 |  |  | 2015-03-23 | 2015-03-27 | 5d |  | Colleen Loftus | 40h |  |
| 7 | 1.6 | Contract Modification 2 Executed | milestone, manual | 5d | 2015-03-23 A | 2015-03-27 | 75% | 1.25d | 2015-03-23 | 2015-03-27 | 5d |  | Walter Holt | 40h | 30h |
| 8 | 1.7 | Obtain Training Location at Phoenix TS for Power User Training | manual | 5d | 2015-03-23 A | 2015-03-27 | 75% | 1.25d | 2015-03-23 | 2015-03-27 | 5d |  | Justin Heykoop; Marcie Fort; Sarah Lambert | 60h | 30h |
| 9 | 1.8 | Obtain Agreement with DAU for PM Training | manual | 25d | 2015-03-23 A | 2015-04-24 | 25% | 18.75d | 2015-03-23 | 2015-04-24 | 25d |  | Chandler Grice | 200h | 50h |
| 10 | 1.9 | Contract Modification for Enterprise Engineering Support | manual | 5d | 2015-04-06 | 2015-04-10 |  |  | 2015-04-06 | 2015-04-10 | 5d |  | Colleen Loftus; Karen Winkler | 80h |  |
| 11 | 1.10 | MIPR Funding to Enterprise Engineering Support | manual | 2d | 2015-04-07 | 2015-04-08 |  |  | 2015-04-07 | 2015-04-08 | 2d |  | Colleen Loftus; Karen Winkler | 32h |  |
| 12 | 2 | **Training** |  | 121d | 2015-03-23 A | 2015-09-07 | 9% | 110.08d | 2015-03-23 | 2015-09-07 | 121d | 0d |  | 1424.8h | 135.2h |
| 13 | 2.1 | Mandatory Training Letter Approval | manual | 1d | 2015-03-23 A | 2015-03-23 A | 100% |  | 2015-03-23 | 2015-03-23 | 1d |  | Courtney Torres | 8h | 8h |
| 14 | 2.2 | Mandatory Training Notification | manual | 5d | 2015-03-23 | 2015-03-27 |  |  | 2015-03-23 | 2015-03-27 | 5d |  | Mr. A. Schenck | 40h |  |
| 15 | 2.3 | Identification of Power Users | manual | 13d | 2015-03-23 A | 2015-04-08 | 30% | 9.1d | 2015-03-23 | 2015-04-08 | 13d |  | Mr. A. Schenck; Jennifer Singley | 176.8h | 31.2h |
| 16 | 2.4 | Receipt of Power User Training Materials | manual | 1d | 2015-04-06 | 2015-04-06 |  |  | 2015-04-06 | 2015-04-06 | 1d |  | Randle Holloway | 8h |  |
| 17 | 2.5 | Training for the Power Users - Session One - 18 seats | milestone, manual | 3d | 2015-04-13 | 2015-04-15 |  |  | 2015-04-13 | 2015-04-15 | 3d |  | Goldschmitt | 24h |  |
| 18 | 2.6 | Training for the Power Users - Session Two - 18 seats | milestone, manual | 3d | 2015-04-15 | 2015-04-17 |  |  | 2015-04-15 | 2015-04-17 | 3d |  | Goldschmitt | 24h |  |
| 19 | 2.7 | Train the Trainer - Session One | manual | 1d | 2015-04-21 | 2015-04-21 |  |  | 2015-04-21 | 2015-04-21 | 1d |  | Goldschmitt | 8h |  |
| 20 | 2.8 | Train the Trainer - Session Two | manual | 1d | 2015-04-22 | 2015-04-22 |  |  | 2015-04-22 | 2015-04-22 | 1d |  | Goldschmitt | 8h |  |
| 21 | 2.9 | Identification of Number of Users for PM Baseline Training | manual | 3d | 2015-03-23 | 2015-03-25 |  |  | 2015-03-23 | 2015-03-25 | 3d |  | Chandler Grice | 24h |  |
| 22 | 2.10 | PM Baseline Training - Number of Sessions | manual | 3d | 2015-03-23 A | 2015-03-25 | 50% | 1.5d | 2015-03-23 | 2015-03-25 | 3d |  | Chandler Grice | 24h | 12h |
| 23 | 2.11 | Online Training - Available | milestone, manual | 1d | 2015-03-23 A | 2015-03-23 A | 100% |  | 2015-03-23 | 2015-03-23 | 1d |  | Goldschmitt | 8h | 8h |
| 24 | 2.12 | Job Aides | milestone, manual | 1d | 2015-03-23 A | 2015-03-23 A | 100% |  | 2015-03-23 | 2015-03-23 | 1d |  | Goldschmitt | 8h | 8h |
| 25 | 2.13 | User Guide | milestone, manual | 6d | 2015-03-23 A | 2015-03-30 | 75% | 1.5d | 2015-03-23 | 2015-03-30 | 6d |  | Randy Jacobs; Courtney Torres; Randle Holloway | 104h | 68h |
| 26 | 2.14 | Receipt of End User Training Materials | manual | 1d | 2015-04-24 | 2015-04-24 |  |  | 2015-04-24 | 2015-04-24 | 1d |  | Randle Holloway | 8h |  |

| ID | WBS | Task | Type | Duration | Start | Finish | Baseline start | Baseline finish | Baseline duration | Total slack | Resources | Work |
| --- | --- | --- | --- | --- | --- | --- | --- | --- | --- | --- | --- | --- |
| 27 | 2.15 | **End User Training - May - 30 sessions** |  | 15d | 2015-05-01 | 2015-05-21 | 2015-05-01 | 2015-05-21 | 15d | 0d | Goldschmitt | 360h |
| 28 | 2.15.1 | End User Training - May - Session 1 | manual | 1d | 2015-05-01 | 2015-05-01 | 2015-05-01 | 2015-05-01 | 1d |  | Goldschmitt | 8h |
| 29 | 2.15.2 | End User Training - May - Session 2 | manual | 1d | 2015-05-01 | 2015-05-01 | 2015-05-01 | 2015-05-01 | 1d |  | Goldschmitt | 8h |
| 30 | 2.15.3 | End User Training - May - Session 3 | manual | 1d | 2015-05-04 | 2015-05-04 | 2015-05-04 | 2015-05-04 | 1d |  | Goldschmitt | 8h |
| 31 | 2.15.4 | End User Training - May - Session 4 | manual | 1d | 2015-05-04 | 2015-05-04 | 2015-05-04 | 2015-05-04 | 1d |  | Goldschmitt | 8h |
| 32 | 2.15.5 | End User Training - May - Session 5 | manual | 1d | 2015-05-05 | 2015-05-05 | 2015-05-05 | 2015-05-05 | 1d |  | Goldschmitt | 8h |
| 33 | 2.15.6 | End User Training - May - Session 6 | manual | 1d | 2015-05-05 | 2015-05-05 | 2015-05-05 | 2015-05-05 | 1d |  | Goldschmitt | 8h |
| 34 | 2.15.7 | End User Training - May - Session 7 | manual | 1d | 2015-05-06 | 2015-05-06 | 2015-05-06 | 2015-05-06 | 1d |  | Goldschmitt | 8h |
| 35 | 2.15.8 | End User Training - May - Session 8 | manual | 1d | 2015-05-06 | 2015-05-06 | 2015-05-06 | 2015-05-06 | 1d |  | Goldschmitt | 8h |
| 36 | 2.15.9 | End User Training - May - Session 9 | manual | 1d | 2015-05-07 | 2015-05-07 | 2015-05-07 | 2015-05-07 | 1d |  | Goldschmitt | 8h |
| 37 | 2.15.10 | End User Training - May - Session 10 | manual | 1d | 2015-05-07 | 2015-05-07 | 2015-05-07 | 2015-05-07 | 1d |  | Goldschmitt | 8h |
| 38 | 2.15.11 | End User Training - May - Session 11 | manual | 1d | 2015-05-08 | 2015-05-08 | 2015-05-08 | 2015-05-08 | 1d |  | Goldschmitt | 8h |
| 39 | 2.15.12 | End User Training - May - Session 12 | manual | 1d | 2015-05-08 | 2015-05-08 | 2015-05-08 | 2015-05-08 | 1d |  | Goldschmitt | 8h |
| 40 | 2.15.13 | End User Training - May - Session 13 | manual | 1d | 2015-05-11 | 2015-05-11 | 2015-05-11 | 2015-05-11 | 1d |  | Goldschmitt | 8h |
| 41 | 2.15.14 | End User Training - May - Session 14 | manual | 1d | 2015-05-11 | 2015-05-11 | 2015-05-11 | 2015-05-11 | 1d |  | Goldschmitt | 8h |
| 42 | 2.15.15 | End User Training - May - Session 15 | manual | 1d | 2015-05-12 | 2015-05-12 | 2015-05-12 | 2015-05-12 | 1d |  | Goldschmitt | 8h |
| 43 | 2.15.16 | End User Training - May - Session 16 | manual | 1d | 2015-05-12 | 2015-05-12 | 2015-05-12 | 2015-05-12 | 1d |  | Goldschmitt | 8h |
| 44 | 2.15.17 | End User Training - May - Session 17 | manual | 1d | 2015-05-13 | 2015-05-13 | 2015-05-13 | 2015-05-13 | 1d |  | Goldschmitt | 8h |
| 45 | 2.15.18 | End User Training - May - Session 18 | manual | 1d | 2015-05-13 | 2015-05-13 | 2015-05-13 | 2015-05-13 | 1d |  | Goldschmitt | 8h |
| 46 | 2.15.19 | End User Training - May - Session 19 | manual | 1d | 2015-05-14 | 2015-05-14 | 2015-05-14 | 2015-05-14 | 1d |  | Goldschmitt | 8h |
| 47 | 2.15.20 | End User Training - May - Session 20 | manual | 1d | 2015-05-14 | 2015-05-14 | 2015-05-14 | 2015-05-14 | 1d |  | Goldschmitt | 8h |
| 48 | 2.15.21 | End User Training - May - Session 21 | manual | 1d | 2015-05-15 | 2015-05-15 | 2015-05-15 | 2015-05-15 | 1d |  | Goldschmitt | 8h |
| 49 | 2.15.22 | End User Training - May - Session 22 | manual | 1d | 2015-05-15 | 2015-05-15 | 2015-05-15 | 2015-05-15 | 1d |  | Goldschmitt | 8h |
| 50 | 2.15.23 | End User Training - May - Session 23 | manual | 1d | 2015-05-18 | 2015-05-18 | 2015-05-18 | 2015-05-18 | 1d |  | Goldschmitt | 8h |
| 51 | 2.15.24 | End User Training - May - Session 24 | manual | 1d | 2015-05-18 | 2015-05-18 | 2015-05-18 | 2015-05-18 | 1d |  | Goldschmitt | 8h |
| 52 | 2.15.25 | End User Training - May - Session 25 | manual | 1d | 2015-05-19 | 2015-05-19 | 2015-05-19 | 2015-05-19 | 1d |  | Goldschmitt | 8h |
| 53 | 2.15.26 | End User Training - May - Session 26 | manual | 1d | 2015-05-19 | 2015-05-19 | 2015-05-19 | 2015-05-19 | 1d |  | Goldschmitt | 8h |
| 54 | 2.15.27 | End User Training - May - Session 27 | manual | 1d | 2015-05-20 | 2015-05-20 | 2015-05-20 | 2015-05-20 | 1d |  | Goldschmitt | 8h |
| 55 | 2.15.28 | End User Training - May - Session 28 | manual | 1d | 2015-05-20 | 2015-05-20 | 2015-05-20 | 2015-05-20 | 1d |  | Goldschmitt | 8h |
| 56 | 2.15.29 | End User Training - May - Session 29 | manual | 1d | 2015-05-21 | 2015-05-21 | 2015-05-21 | 2015-05-21 | 1d |  | Goldschmitt | 8h |
| 57 | 2.15.30 | End User Training - May - Session 30 | manual | 1d | 2015-05-21 | 2015-05-21 | 2015-05-21 | 2015-05-21 | 1d |  | Goldschmitt | 8h |

| ID | WBS | Task | Type | Duration | Start | Finish | Baseline start | Baseline finish | Baseline duration | Total slack | Resources | Work |
| --- | --- | --- | --- | --- | --- | --- | --- | --- | --- | --- | --- | --- |
| 58 | 2.16 | **End User Training - June - 30 sessions** |  | 14d | 2015-06-01 | 2015-06-18 | 2015-06-01 | 2015-06-18 | 14d | 0d | Goldschmitt | 112h |
| 59 | 2.16.1 | End User Training - June - Session 1 | manual | 1d | 2015-06-01 | 2015-06-01 | 2015-06-01 | 2015-06-01 | 1d |  |  |  |
| 60 | 2.16.2 | End User Training - June - Session 2 | manual | 1d | 2015-06-01 | 2015-06-01 | 2015-06-01 | 2015-06-01 | 1d |  |  |  |
| 61 | 2.16.3 | End User Training - June - Session 3 | manual | 1d | 2015-06-02 | 2015-06-02 | 2015-06-02 | 2015-06-02 | 1d |  |  |  |
| 62 | 2.16.4 | End User Training - June - Session 4 | manual | 1d | 2015-06-02 | 2015-06-02 | 2015-06-02 | 2015-06-02 | 1d |  |  |  |
| 63 | 2.16.5 | End User Training - June - Session 5 | manual | 1d | 2015-06-03 | 2015-06-03 | 2015-06-03 | 2015-06-03 | 1d |  |  |  |
| 64 | 2.16.6 | End User Training - June - Session 6 | manual | 1d | 2015-06-03 | 2015-06-03 | 2015-06-03 | 2015-06-03 | 1d |  |  |  |
| 65 | 2.16.7 | End User Training - June - Session 7 | manual | 1d | 2015-06-03 | 2015-06-03 | 2015-06-03 | 2015-06-03 | 1d |  |  |  |
| 66 | 2.16.8 | End User Training - June - Session 8 | manual | 1d | 2015-06-03 | 2015-06-03 | 2015-06-03 | 2015-06-03 | 1d |  |  |  |
| 67 | 2.16.9 | End User Training - June - Session 9 | manual | 1d | 2015-06-04 | 2015-06-04 | 2015-06-04 | 2015-06-04 | 1d |  |  |  |
| 68 | 2.16.10 | End User Training - June - Session 10 | manual | 1d | 2015-06-04 | 2015-06-04 | 2015-06-04 | 2015-06-04 | 1d |  |  |  |
| 69 | 2.16.11 | End User Training - June - Session 11 | manual | 1d | 2015-06-05 | 2015-06-05 | 2015-06-05 | 2015-06-05 | 1d |  |  |  |
| 70 | 2.16.12 | End User Training - June - Session 12 | manual | 1d | 2015-06-05 | 2015-06-05 | 2015-06-05 | 2015-06-05 | 1d |  |  |  |
| 71 | 2.16.13 | End User Training - June - Session 13 | manual | 1d | 2015-06-08 | 2015-06-08 | 2015-06-08 | 2015-06-08 | 1d |  |  |  |
| 72 | 2.16.14 | End User Training - June - Session 14 | manual | 1d | 2015-06-08 | 2015-06-08 | 2015-06-08 | 2015-06-08 | 1d |  |  |  |
| 73 | 2.16.15 | End User Training - June - Session 15 | manual | 1d | 2015-06-09 | 2015-06-09 | 2015-06-09 | 2015-06-09 | 1d |  |  |  |
| 74 | 2.16.16 | End User Training - June - Session 16 | manual | 1d | 2015-06-09 | 2015-06-09 | 2015-06-09 | 2015-06-09 | 1d |  |  |  |
| 75 | 2.16.17 | End User Training - June - Session 17 | manual | 1d | 2015-06-10 | 2015-06-10 | 2015-06-10 | 2015-06-10 | 1d |  |  |  |
| 76 | 2.16.18 | End User Training - June - Session 18 | manual | 1d | 2015-06-10 | 2015-06-10 | 2015-06-10 | 2015-06-10 | 1d |  |  |  |
| 77 | 2.16.19 | End User Training - June - Session 19 | manual | 1d | 2015-06-11 | 2015-06-11 | 2015-06-11 | 2015-06-11 | 1d |  |  |  |
| 78 | 2.16.20 | End User Training - June - Session 20 | manual | 1d | 2015-06-11 | 2015-06-11 | 2015-06-11 | 2015-06-11 | 1d |  |  |  |
| 79 | 2.16.21 | End User Training - June - Session 21 | manual | 1d | 2015-06-12 | 2015-06-12 | 2015-06-12 | 2015-06-12 | 1d |  |  |  |
| 80 | 2.16.22 | End User Training - June - Session 22 | manual | 1d | 2015-06-12 | 2015-06-12 | 2015-06-12 | 2015-06-12 | 1d |  |  |  |
| 81 | 2.16.23 | End User Training - June - Session 23 | manual | 1d | 2015-06-15 | 2015-06-15 | 2015-06-15 | 2015-06-15 | 1d |  |  |  |
| 82 | 2.16.24 | End User Training - June - Session 24 | manual | 1d | 2015-06-15 | 2015-06-15 | 2015-06-15 | 2015-06-15 | 1d |  |  |  |
| 83 | 2.16.25 | End User Training - June - Session 25 | manual | 1d | 2015-06-16 | 2015-06-16 | 2015-06-16 | 2015-06-16 | 1d |  |  |  |
| 84 | 2.16.26 | End User Training - June - Session 26 | manual | 1d | 2015-06-16 | 2015-06-16 | 2015-06-16 | 2015-06-16 | 1d |  |  |  |
| 85 | 2.16.27 | End User Training - June - Session 27 | manual | 1d | 2015-06-17 | 2015-06-17 | 2015-06-17 | 2015-06-17 | 1d |  |  |  |
| 86 | 2.16.28 | End User Training - June - Session 28 | manual | 1d | 2015-06-17 | 2015-06-17 | 2015-06-17 | 2015-06-17 | 1d |  |  |  |
| 87 | 2.16.29 | End User Training - June - Session 29 | manual | 1d | 2015-06-18 | 2015-06-18 | 2015-06-18 | 2015-06-18 | 1d |  |  |  |
| 88 | 2.16.30 | End User Training - June - Session 30 | manual | 1d | 2015-06-18 | 2015-06-18 | 2015-06-18 | 2015-06-18 | 1d |  |  |  |

| ID | WBS | Task | Type | Duration | Start | Finish | Baseline start | Baseline finish | Baseline duration | Total slack | Resources | Work |
| --- | --- | --- | --- | --- | --- | --- | --- | --- | --- | --- | --- | --- |
| 89 | 2.17 | **End User Training - July - 20 sessions** |  | 10d | 2015-07-07 | 2015-07-20 | 2015-07-07 | 2015-07-20 | 10d | 0d | Goldschmitt | 240h |
| 90 | 2.17.1 | End User Training - July - Session 1 | manual | 1d | 2015-07-07 | 2015-07-07 | 2015-07-07 | 2015-07-07 | 1d |  | Goldschmitt | 8h |
| 91 | 2.17.2 | End User Training - July - Session 2 | manual | 1d | 2015-07-07 | 2015-07-07 | 2015-07-07 | 2015-07-07 | 1d |  | Goldschmitt | 8h |
| 92 | 2.17.3 | End User Training - July - Session 3 | manual | 1d | 2015-07-08 | 2015-07-08 | 2015-07-08 | 2015-07-08 | 1d |  | Goldschmitt | 8h |
| 93 | 2.17.4 | End User Training - July - Session 4 | manual | 1d | 2015-07-08 | 2015-07-08 | 2015-07-08 | 2015-07-08 | 1d |  | Goldschmitt | 8h |
| 94 | 2.17.5 | End User Training - July - Session 5 | manual | 1d | 2015-07-09 | 2015-07-09 | 2015-07-09 | 2015-07-09 | 1d |  | Goldschmitt | 8h |
| 95 | 2.17.6 | End User Training - July - Session 6 | manual | 1d | 2015-07-09 | 2015-07-09 | 2015-07-09 | 2015-07-09 | 1d |  | Goldschmitt | 8h |
| 96 | 2.17.7 | End User Training - July - Session 7 | manual | 1d | 2015-07-10 | 2015-07-10 | 2015-07-10 | 2015-07-10 | 1d |  | Goldschmitt | 8h |
| 97 | 2.17.8 | End User Training - July - Session 8 | manual | 1d | 2015-07-10 | 2015-07-10 | 2015-07-10 | 2015-07-10 | 1d |  | Goldschmitt | 8h |
| 98 | 2.17.9 | End User Training - July - Session 9 | manual | 1d | 2015-07-13 | 2015-07-13 | 2015-07-13 | 2015-07-13 | 1d |  | Goldschmitt | 8h |
| 99 | 2.17.10 | End User Training - July - Session 10 | manual | 1d | 2015-07-13 | 2015-07-13 | 2015-07-13 | 2015-07-13 | 1d |  | Goldschmitt | 8h |
| 100 | 2.17.11 | End User Training - July - Session 11 | manual | 1d | 2015-07-14 | 2015-07-14 | 2015-07-14 | 2015-07-14 | 1d |  | Goldschmitt | 8h |
| 101 | 2.17.12 | End User Training - July - Session 12 | manual | 1d | 2015-07-14 | 2015-07-14 | 2015-07-14 | 2015-07-14 | 1d |  | Goldschmitt | 8h |
| 102 | 2.17.13 | End User Training - July - Session 13 | manual | 1d | 2015-07-15 | 2015-07-15 | 2015-07-15 | 2015-07-15 | 1d |  | Goldschmitt | 8h |
| 103 | 2.17.14 | End User Training - July - Session 14 | manual | 1d | 2015-07-15 | 2015-07-15 | 2015-07-15 | 2015-07-15 | 1d |  | Goldschmitt | 8h |
| 104 | 2.17.15 | End User Training - July - Session 15 | manual | 1d | 2015-07-16 | 2015-07-16 | 2015-07-16 | 2015-07-16 | 1d |  | Goldschmitt | 8h |
| 105 | 2.17.16 | End User Training - July - Session 16 | manual | 1d | 2015-07-16 | 2015-07-16 | 2015-07-16 | 2015-07-16 | 1d |  | Goldschmitt | 8h |
| 106 | 2.17.17 | End User Training - July - Session 17 | manual | 1d | 2015-07-17 | 2015-07-17 | 2015-07-17 | 2015-07-17 | 1d |  | Goldschmitt | 8h |
| 107 | 2.17.18 | End User Training - July - Session 18 | manual | 1d | 2015-07-17 | 2015-07-17 | 2015-07-17 | 2015-07-17 | 1d |  | Goldschmitt | 8h |
| 108 | 2.17.19 | End User Training - July - Session 19 | manual | 1d | 2015-07-20 | 2015-07-20 | 2015-07-20 | 2015-07-20 | 1d |  | Goldschmitt | 8h |
| 109 | 2.17.20 | End User Training - July - Session 20 | manual | 1d | 2015-07-20 | 2015-07-20 | 2015-07-20 | 2015-07-20 | 1d |  | Goldschmitt | 8h |
| 110 | 2.18 | **End User Training - August - 10 sessions** |  | 5d | 2015-08-03 | 2015-08-07 | 2015-08-03 | 2015-08-07 | 5d | 0d | Goldschmitt | 120h |
| 111 | 2.18.1 | End User Training - August - Session 1 | manual | 1d | 2015-08-03 | 2015-08-03 | 2015-08-03 | 2015-08-03 | 1d |  | Goldschmitt | 8h |
| 112 | 2.18.2 | End User Training - August - Session 2 | manual | 1d | 2015-08-03 | 2015-08-03 | 2015-08-03 | 2015-08-03 | 1d |  | Goldschmitt | 8h |
| 113 | 2.18.3 | End User Training - August - Session 3 | manual | 1d | 2015-08-04 | 2015-08-04 | 2015-08-04 | 2015-08-04 | 1d |  | Goldschmitt | 8h |
| 114 | 2.18.4 | End User Training - August - Session 4 | manual | 1d | 2015-08-04 | 2015-08-04 | 2015-08-04 | 2015-08-04 | 1d |  | Goldschmitt | 8h |
| 115 | 2.18.5 | End User Training - August - Session 5 | manual | 1d | 2015-08-05 | 2015-08-05 | 2015-08-05 | 2015-08-05 | 1d |  | Goldschmitt | 8h |
| 116 | 2.18.6 | End User Training - August - Session 6 | manual | 1d | 2015-08-05 | 2015-08-05 | 2015-08-05 | 2015-08-05 | 1d |  | Goldschmitt | 8h |
| 117 | 2.18.7 | End User Training - August - Session 7 | manual | 1d | 2015-08-06 | 2015-08-06 | 2015-08-06 | 2015-08-06 | 1d |  | Goldschmitt | 8h |
| 118 | 2.18.8 | End User Training - August - Session 8 | manual | 1d | 2015-08-06 | 2015-08-06 | 2015-08-06 | 2015-08-06 | 1d |  | Goldschmitt | 8h |
| 119 | 2.18.9 | End User Training - August - Session 9 | manual | 1d | 2015-08-07 | 2015-08-07 | 2015-08-07 | 2015-08-07 | 1d |  | Goldschmitt | 8h |
| 120 | 2.18.10 | End User Training - August - Session 10 | manual | 1d | 2015-08-07 | 2015-08-07 | 2015-08-07 | 2015-08-07 | 1d |  | Goldschmitt | 8h |

| ID | WBS | Task | Type | Duration | Start | Finish | Predecessors | Complete | Remaining | Baseline start | Baseline finish | Baseline duration | Total slack | Resources | Work | Actual work |
| --- | --- | --- | --- | --- | --- | --- | --- | --- | --- | --- | --- | --- | --- | --- | --- | --- |
| 121 | 2.19 | **End User Training - September - 10 sessions** |  | 5d | 2015-09-01 | 2015-09-07 |  |  |  | 2015-09-01 | 2015-09-07 | 5d | 0d | Goldschmitt | 120h |  |
| 122 | 2.19.1 | End User Training - September - Session 1 | manual | 1d | 2015-09-01 | 2015-09-01 |  |  |  | 2015-09-01 | 2015-09-01 | 1d |  | Goldschmitt | 8h |  |
| 123 | 2.19.2 | End User Training - September - Session 2 | manual | 1d | 2015-09-01 | 2015-09-01 |  |  |  | 2015-09-01 | 2015-09-01 | 1d |  | Goldschmitt | 8h |  |
| 124 | 2.19.3 | End User Training - September - Session 3 | manual | 1d | 2015-09-02 | 2015-09-02 |  |  |  | 2015-09-02 | 2015-09-02 | 1d |  | Goldschmitt | 8h |  |
| 125 | 2.19.4 | End User Training - September - Session 4 | manual | 1d | 2015-09-02 | 2015-09-02 |  |  |  | 2015-09-02 | 2015-09-02 | 1d |  | Goldschmitt | 8h |  |
| 126 | 2.19.5 | End User Training - September - Session 5 | manual | 1d | 2015-09-03 | 2015-09-03 |  |  |  | 2015-09-03 | 2015-09-03 | 1d |  | Goldschmitt | 8h |  |
| 127 | 2.19.6 | End User Training - September - Session 6 | manual | 1d | 2015-09-03 | 2015-09-03 |  |  |  | 2015-09-03 | 2015-09-03 | 1d |  | Goldschmitt | 8h |  |
| 128 | 2.19.7 | End User Training - September - Session 7 | manual | 1d | 2015-09-04 | 2015-09-04 |  |  |  | 2015-09-04 | 2015-09-04 | 1d |  | Goldschmitt | 8h |  |
| 129 | 2.19.8 | End User Training - September - Session 8 | manual | 1d | 2015-09-04 | 2015-09-04 |  |  |  | 2015-09-04 | 2015-09-04 | 1d |  | Goldschmitt | 8h |  |
| 130 | 2.19.9 | End User Training - September - Session 9 | manual | 1d | 2015-09-07 | 2015-09-07 |  |  |  | 2015-09-07 | 2015-09-07 | 1d |  | Goldschmitt | 8h |  |
| 131 | 2.19.10 | End User Training - September - Session 10 | manual | 1d | 2015-09-07 | 2015-09-07 |  |  |  | 2015-09-07 | 2015-09-07 | 1d |  | Goldschmitt | 8h |  |
| 132 | 3 | **Engineering and Implementation** |  | 168d | 2015-02-09 A | 2015-09-30 |  | 8% | 154.64d | 2015-02-09 | 2015-09-30 | 168d | 0d |  | 7792h | 384h |
| 133 | 3.1 | **Zone D TAC** |  | 25d | 2015-02-09 A | 2015-03-13 A |  | 100% |  | 2015-02-09 | 2015-03-13 | 25d |  |  | 200h | 200h |
| 134 | 3.1.1 | Dev Version Install | manual | 1w | 2015-02-09 A | 2015-02-13 A |  | 100% |  | 2015-02-09 | 2015-02-13 | 1w |  | William Grenzer; Goldschmitt | 40h | 40h |
| 135 | 3.1.2 | PKI Authentication | manual | 2w | 2015-02-16 A | 2015-02-27 A |  | 100% |  | 2015-02-16 | 2015-02-27 | 2w |  | William Grenzer | 80h | 80h |
| 136 | 3.1.3 | PKI Testing | manual | 2w | 2015-03-02 A | 2015-03-13 A |  | 100% |  | 2015-03-02 | 2015-03-13 | 2w |  | William Grenzer | 80h | 80h |
| 137 | 3.2 | **Zone B TAC** |  | 51d | 2015-03-02 A | 2015-05-11 |  | 66% | 17.39d | 2015-03-02 | 2015-05-11 | 51d | 0d |  | 472h | 152h |
| 138 | 3.2.1 | Test Version Install | manual | 1w | 2015-03-02 A | 2015-03-06 A |  | 100% |  | 2015-03-02 | 2015-03-06 | 1w |  | Goldschmitt | 40h | 40h |
| 139 | 3.2.2 | Branding Update | manual | 5d | 2015-03-10 A | 2015-03-16 A |  | 100% |  | 2015-03-10 | 2015-03-16 | 5d |  | William Grenzer; Goldschmitt | 40h | 40h |
| 140 | 3.2.3 | **PKI update** |  | 6d | 2015-03-18 A | 2015-03-25 |  | 75% | 1.5d | 2015-03-18 | 2015-03-25 | 6d | 0d | William Grenzer | 96h | 72h |
| 141 | 3.2.3.1 | SSL Certs | manual | 6d | 2015-03-18 A | 2015-03-25 |  | 75% | 1.5d | 2015-03-18 | 2015-03-25 | 6d |  | William Grenzer | 48h | 36h |
| 142 | 3.2.4 | Obtain Whitelist | manual | 1d | 2015-03-23 | 2015-03-23 |  |  |  | 2015-03-23 | 2015-03-23 | 1d |  | Mr. A. Schenck; Jennifer Singley | 16h |  |
| 143 | 3.2.5 | Apply WhiteList | manual | 2d | 2015-03-24 | 2015-03-25 | 142 |  |  | 2015-03-24 | 2015-03-25 | 2d |  | William Grenzer | 16h |  |
| 144 | 3.2.6 | Open DISANet Ports | manual | 2d | 2015-03-26 | 2015-03-27 | 143 |  |  | 2015-03-26 | 2015-03-27 | 2d |  | William Grenzer | 16h |  |
| 145 | 3.2.7 | Functional Testing | manual | 1d | 2015-03-30 | 2015-03-30 | 144 |  |  | 2015-03-30 | 2015-03-30 | 1d |  | Goldschmitt | 8h |  |

| ID | WBS | Task | Type | Duration | Start | Finish | Predecessors | Complete | Remaining | Baseline start | Baseline finish | Baseline duration | Total slack | Free slack | Constraint | Resources | Work | Actual work |
| --- | --- | --- | --- | --- | --- | --- | --- | --- | --- | --- | --- | --- | --- | --- | --- | --- | --- | --- |
| 146 | 3.2.8 | **Limited Operation** |  | 30d | 2015-03-31 | 2015-05-11 |  |  |  | 2015-03-31 | 2015-05-11 | 30d |  |  |  | William Grenzer | 240h |  |
| 147 | 3.2.8.1 | EPM Live System is Available for Limited Use | milestone | 0d | 2015-03-31 | 2015-03-31 | 145 |  |  | 2015-03-31 | 2015-03-31 |  | 30d | 0d |  | William Grenzer |  |  |
| 148 | 3.3 | **IATT TAC** |  | 15d | 2015-03-09 A | 2015-03-30 |  | 99% | 0d | 2015-03-09 | 2015-03-30 | 15d | 0d |  |  |  | 32h | 32h |
| 149 | 3.3.1 | Submission Form | manual | 1d | 2015-03-09 A | 2015-03-09 A |  | 100% |  | 2015-03-09 | 2015-03-09 | 1d |  |  |  | John Evans | 8h | 8h |
| 150 | 3.3.2 | **Contents** |  | 1d | 2015-03-11 A | 2015-03-11 A |  | 100% |  | 2015-03-11 | 2015-03-11 | 1d |  |  |  |  | 24h | 24h |
| 151 | 3.3.2.1 | Server Topology | manual | 1d | 2015-03-11 A | 2015-03-11 A |  | 100% |  | 2015-03-11 | 2015-03-11 | 1d |  |  |  | John Evans | 8h | 8h |
| 152 | 3.3.2.2 | Ports & Protocols list | manual | 1d | 2015-03-11 A | 2015-03-11 A |  | 100% |  | 2015-03-11 | 2015-03-11 | 1d |  |  |  | John Evans | 8h | 8h |
| 153 | 3.3.2.3 | Server descriptions | manual | 1d | 2015-03-11 A | 2015-03-11 A |  | 100% |  | 2015-03-11 | 2015-03-11 | 1d |  |  |  | John Evans | 8h | 8h |
| 154 | 3.3.3 | IATT Submitted | milestone, manual | 0d | 2015-03-13 A | 2015-03-13 A |  | 100% |  | 2015-03-13 | 2015-03-13 |  |  |  |  | John Evans |  |  |
| 155 | 3.3.4 | IATT Signed | milestone, manual | 0d | 2015-03-30 | 2015-03-30 |  |  |  | 2015-03-30 | 2015-03-30 |  |  |  |  | George Simmons |  |  |
| 156 | 3.4 | **MilCloud Setup** |  | 26d | 2015-03-30 | 2015-05-04 |  |  |  | 2015-03-30 | 2015-05-04 | 26d | 0d |  |  |  | 200h |  |
| 157 | 3.4.1 | VDC Provisioned | manual | 1d | 2015-03-30 | 2015-03-30 | 3 |  |  | 2015-03-30 | 2015-03-30 | 1d |  |  |  | Kenton Waddell | 8h |  |
| 158 | 3.4.2 | Setup Admin Accounts, 2875s | manual | 1d | 2015-03-31 | 2015-03-31 | 157 |  |  | 2015-03-31 | 2015-03-31 | 1d |  |  |  | Carl Young | 8h |  |
| 159 | 3.4.3 | Copy VMs from TAC | manual | 3d | 2015-04-01 | 2015-04-03 | 158 |  |  | 2015-04-01 | 2015-04-03 | 3d |  |  |  | Carl Young | 24h |  |
| 160 | 3.4.4 | STIG VMs | manual | 5d | 2015-04-06 | 2015-04-10 | 159 |  |  | 2015-04-06 | 2015-04-10 | 5d |  |  |  | Carl Young | 40h |  |
| 161 | 3.4.5 | SSL Certs | manual | 3d | 2015-04-13 | 2015-04-15 | 160 |  |  | 2015-04-13 | 2015-04-15 | 3d |  |  |  | Carl Young | 24h |  |
| 162 | 3.4.6 | F5 Configuration | manual | 1w | 2015-04-16 | 2015-04-22 | 161 |  |  | 2015-04-16 | 2015-04-22 | 1w |  |  |  | Carl Young | 40h |  |
| 163 | 3.4.7 | Open Gateway Ports | manual | 1w | 2015-04-24 | 2015-04-30 | 162, 173 |  |  | 2015-04-24 | 2015-04-30 | 1w |  |  |  | Carl Young | 40h |  |
| 164 | 3.4.8 | Functional Testing |  | 2d | 2015-05-01 | 2015-05-04 | 163 |  |  | 2015-05-01 | 2015-05-04 | 2d | 103d | 0d |  | Carl Young | 16h |  |
| 165 | 3.5 | **MilCloud Operate** |  | 107d | 2015-05-05 | 2015-09-30 |  |  |  | 2015-05-05 | 2015-09-30 | 107d | 0d |  |  |  | 864h |  |
| 166 | 3.5.1 | Op Assessment |  | 3d | 2015-05-05 | 2015-05-07 | 164 |  |  | 2015-05-05 | 2015-05-07 | 3d | 103d | 0d |  | Carl Young | 24h |  |
| 167 | 3.5.2 | Operate & Maintain Begins | milestone | 1d | 2015-05-08 | 2015-05-08 | 166 |  |  | 2015-05-08 | 2015-05-08 | 1d | 103d |  | start no earlier than 2015-05-08 | Carl Young | 8h |  |
| 168 | 3.5.3 | Operate & Maintain | manual | 104d | 2015-05-08 | 2015-09-30 |  |  |  | 2015-05-08 | 2015-09-30 | 104d |  |  |  | Carl Young | 832h |  |
| 169 | 3.6 | **IATT VDC** |  | 19d | 2015-03-30 | 2015-04-24 |  |  |  | 2015-03-30 | 2015-04-24 | 19d | 0d |  |  |  | 72h |  |
| 170 | 3.6.1 | Submit CR for IATT | milestone, manual | 0d | 2015-03-30 | 2015-03-30 |  |  |  | 2015-03-30 | 2015-03-30 |  |  |  |  | John Evans |  |  |
| 171 | 3.6.2 | Security Scan | manual | 4d | 2015-04-13 | 2015-04-16 | 160 |  |  | 2015-04-13 | 2015-04-16 | 4d |  |  |  | John Evans | 32h |  |
| 172 | 3.6.3 | VMS Entrys[No CAT 1s] | manual | 5d | 2015-04-17 | 2015-04-23 | 171 |  |  | 2015-04-17 | 2015-04-23 | 5d |  |  |  | John Evans | 40h |  |
| 173 | 3.6.4 | DAA Signs CR | milestone, manual | 0d | 2015-04-24 | 2015-04-24 | 172 |  |  | 2015-04-24 | 2015-04-24 |  |  |  |  | George Simmons |  |  |
| 174 | 3.6.5 | DAA Signs CORA | milestone, manual | 0d | 2015-04-24 | 2015-04-24 | 172 |  |  | 2015-04-24 | 2015-04-24 |  |  |  |  | George Simmons |  |  |

| ID | WBS | Task | Type | Duration | Start | Finish | Predecessors | Baseline start | Baseline finish | Baseline duration | Total slack | Resources | Work |
| --- | --- | --- | --- | --- | --- | --- | --- | --- | --- | --- | --- | --- | --- |
| 175 | 3.7 | **On Boarding of Users** |  | 132d | 2015-03-30 | 2015-09-29 |  | 2015-03-30 | 2015-09-29 | 132d | 0d |  | 5952h |
| 176 | 3.7.1 | Upload of 665 Projects from EPPM | manual | 5d | 2015-03-30 | 2015-04-03 | 7 | 2015-03-30 | 2015-04-03 | 5d |  | Goldschmitt | 40h |
| 177 | 3.7.2 | Conversion of Projects from MS Project to Project Planner | manual | 5d | 2015-04-06 | 2015-04-10 | 176 | 2015-04-06 | 2015-04-10 | 5d |  | Goldschmitt | 40h |
| 178 | 3.7.3 | **User Account Provisioning in EPM Live** |  | 131d | 2015-03-31 | 2015-09-29 |  | 2015-03-31 | 2015-09-29 | 131d | 1d |  | 5872h |
| 179 | 3.7.3.1 | Whitelist Accounts Created | milestone | 2d | 2015-03-31 | 2015-04-01 | 142, 147 | 2015-03-31 | 2015-04-01 | 2d | 130d | Goldschmitt | 16h |
| 180 | 3.7.3.2 | Remaining Accounts Created | manual | 130d | 2015-04-01 | 2015-09-29 |  | 2015-04-01 | 2015-09-29 | 130d |  | Goldschmitt | 1040h |
| 181 | 3.7.3.3 | **Walk-Through with Users on Managing in EPM Live** |  | 130d | 2015-04-01 | 2015-09-29 |  | 2015-04-01 | 2015-09-29 | 130d | 0d | Randle Holloway; Randy Jacobs; Goldschmitt | 4816h |
| 182 | 3.7.3.3.1 | **On Board GEMSIS** |  | 2d | 2015-04-01 | 2015-04-02 |  | 2015-04-01 | 2015-04-02 | 2d | 0d |  | 16h |
| 183 | 3.7.3.3.1.1 | Validate Information in EPM Live from EPPM | manual | 1d | 2015-04-01 | 2015-04-01 |  | 2015-04-01 | 2015-04-01 | 1d |  | Project Representative | 8h |
| 184 | 3.7.3.3.1.2 | Update information in EPM Live | manual | 1d | 2015-04-02 | 2015-04-02 |  | 2015-04-02 | 2015-04-02 | 1d |  | Project Representative | 8h |
| 185 | 3.7.3.3.2 | **On Board Teleport** |  | 2d | 2015-04-06 | 2015-04-07 |  | 2015-04-06 | 2015-04-07 | 2d | 0d |  | 16h |
| 186 | 3.7.3.3.2.1 | Validate Information in EPM Live from EPPM | manual | 1d | 2015-04-06 | 2015-04-06 |  | 2015-04-06 | 2015-04-06 | 1d |  | Project Representative | 8h |
| 187 | 3.7.3.3.2.2 | Update information in EPM Live | manual | 1d | 2015-04-07 | 2015-04-07 |  | 2015-04-07 | 2015-04-07 | 1d |  | Project Representative | 8h |
| 188 | 3.7.3.3.3 | **On Board Mobility** |  | 2d | 2015-04-08 | 2015-04-09 |  | 2015-04-08 | 2015-04-09 | 2d | 0d |  | 16h |
| 189 | 3.7.3.3.3.1 | Validate Information in EPM Live from EPPM | manual | 1d | 2015-04-08 | 2015-04-08 |  | 2015-04-08 | 2015-04-08 | 1d |  | Project Representative | 8h |
| 190 | 3.7.3.3.3.2 | Update information in EPM Live | manual | 1d | 2015-04-09 | 2015-04-09 |  | 2015-04-09 | 2015-04-09 | 1d |  | Project Representative | 8h |
| 191 | 3.7.3.3.4 | **On Board JRSS** |  | 1d | 2015-04-10 | 2015-04-10 |  | 2015-04-10 | 2015-04-10 | 1d | 0d |  | 16h |
| 192 | 3.7.3.3.4.1 | Validate Information in EPM Live from EPPM | manual | 1d | 2015-04-10 | 2015-04-10 |  | 2015-04-10 | 2015-04-10 | 1d |  | Project Representative | 8h |
| 193 | 3.7.3.3.4.2 | Update information in EPM Live | manual | 1d | 2015-04-10 | 2015-04-10 |  | 2015-04-10 | 2015-04-10 | 1d |  | Project Representative | 8h |
| 194 | 3.7.3.3.5 | **On Board Projects > $50M** |  | 5d | 2015-04-13 | 2015-04-17 |  | 2015-04-13 | 2015-04-17 | 5d | 0d |  | 80h |
| 195 | 3.7.3.3.5.1 | Validate Information in EPM Live from EPPM | manual | 5d | 2015-04-13 | 2015-04-17 |  | 2015-04-13 | 2015-04-17 | 5d |  | Project Representative | 40h |
| 196 | 3.7.3.3.5.2 | Update information in EPM Live | manual | 5d | 2015-04-13 | 2015-04-17 |  | 2015-04-13 | 2015-04-17 | 5d |  | Project Representative | 40h |
| 197 | 3.7.3.3.6 | **Remaining Users** |  | 97d | 2015-05-18 | 2015-09-29 |  | 2015-05-18 | 2015-09-29 | 97d | 0d |  | 1552h |
| 198 | 3.7.3.3.6.1 | Validate Information in EPM Live from EPPM | manual | 97d | 2015-05-18 | 2015-09-29 |  | 2015-05-18 | 2015-09-29 | 97d |  | Project Representative | 776h |
| 199 | 3.7.3.3.6.2 | Update information in EPM Live | manual | 97d | 2015-05-18 | 2015-09-29 |  | 2015-05-18 | 2015-09-29 | 97d |  | Project Representative | 776h |

Notes:
- 179: GEMSIS / Teleport / Mobility / Projects > $50M / JRSS Accounts / CAE Accounts

| ID | WBS | Task | Type | Duration | Start | Finish | Complete | Remaining | Baseline start | Baseline finish | Baseline duration | Total slack | Constraint | Resources | Work | Actual work |
| --- | --- | --- | --- | --- | --- | --- | --- | --- | --- | --- | --- | --- | --- | --- | --- | --- |
| 200 | 4 | **Operation and Maintenance** |  | 137d | 2015-03-23 A | 2015-09-29 | 80% | 28.05d | 2015-03-23 | 2015-09-29 | 137d | 0d |  |  | 2448h | 2128h |
| 201 | 4.1 | Help Desk Operations | manual | 131d | 2015-03-31 A | 2015-09-29 A | 100% |  | 2015-03-31 | 2015-09-29 | 131d |  |  | Goldschmitt; Upland - EPM Live | 2096h | 2096h |
| 202 | 4.2 | **Change Control Board** |  | 122d | 2015-03-23 A | 2015-09-08 | 7% | 113.43d | 2015-03-23 | 2015-09-08 | 122d | 0d |  |  | 352h | 32h |
| 203 | 4.2.1 | Change Control Board Membership Identification | manual | 12d | 2015-03-23 A | 2015-04-07 | 10% | 10.8d | 2015-03-23 | 2015-04-07 | 12d |  |  | Mr. A. Schenck | 96h | 9.6h |
| 204 | 4.2.2 | Change Control Board Charter | manual | 7d | 2015-03-23 A | 2015-03-31 | 20% | 5.6d | 2015-03-23 | 2015-03-31 | 7d |  |  | Courtney Torres; Journey Stewart | 112h | 22.4h |
| 205 | 4.2.3 | Change Control Process | manual | 7d | 2015-04-01 | 2015-04-09 |  |  | 2015-04-01 | 2015-04-09 | 7d |  |  | Courtney Torres | 56h |  |
| 206 | 4.2.4 | **Change Control Board Meetings** |  | 101d | 2015-04-21 | 2015-09-08 |  |  | 2015-04-21 | 2015-09-08 | 101d | 0d |  |  | 88h |  |
| 207 | 4.2.4.1 | Change Control Board Meeting 1 | manual | 1d | 2015-04-21 | 2015-04-21 |  |  | 2015-04-21 | 2015-04-21 | 1d |  | start no earlier than 2015-04-21 | CCB Members | 8h |  |
| 208 | 4.2.4.2 | Change Control Board Meeting 2 | manual | 1d | 2015-05-05 | 2015-05-05 |  |  | 2015-05-05 | 2015-05-05 | 1d |  | start no earlier than 2015-05-05 | CCB Members | 8h |  |
| 209 | 4.2.4.3 | Change Control Board Meeting 3 | manual | 1d | 2015-05-19 | 2015-05-19 |  |  | 2015-05-19 | 2015-05-19 | 1d |  | start no earlier than 2015-05-19 | CCB Members | 8h |  |
| 210 | 4.2.4.4 | Change Control Board Meeting 4 | manual | 1d | 2015-06-02 | 2015-06-02 |  |  | 2015-06-02 | 2015-06-02 | 1d |  | start no earlier than 2015-06-02 | CCB Members | 8h |  |
| 211 | 4.2.4.5 | Change Control Board Meeting 5 | manual | 1d | 2015-06-16 | 2015-06-16 |  |  | 2015-06-16 | 2015-06-16 | 1d |  | start no earlier than 2015-06-16 | CCB Members | 8h |  |
| 212 | 4.2.4.6 | Change Control Board Meeting 6 | manual | 1d | 2015-06-30 | 2015-06-30 |  |  | 2015-06-30 | 2015-06-30 | 1d |  | start no earlier than 2015-06-30 | CCB Members | 8h |  |
| 213 | 4.2.4.7 | Change Control Board Meeting 7 | manual | 1d | 2015-07-14 | 2015-07-14 |  |  | 2015-07-14 | 2015-07-14 | 1d |  | start no earlier than 2015-07-14 | CCB Members | 8h |  |
| 214 | 4.2.4.8 | Change Control Board Meeting 8 | manual | 1d | 2015-07-28 | 2015-07-28 |  |  | 2015-07-28 | 2015-07-28 | 1d |  | start no earlier than 2015-07-28 | CCB Members | 8h |  |
| 215 | 4.2.4.9 | Change Control Board Meeting 9 | manual | 1d | 2015-08-11 | 2015-08-11 |  |  | 2015-08-11 | 2015-08-11 | 1d |  | start no earlier than 2015-08-11 | CCB Members | 8h |  |
| 216 | 4.2.4.10 | Change Control Board Meeting 10 | manual | 1d | 2015-08-25 | 2015-08-25 |  |  | 2015-08-25 | 2015-08-25 | 1d |  | start no earlier than 2015-08-25 | CCB Members | 8h |  |
| 217 | 4.2.4.11 | Change Control Board Meeting 11 | manual | 1d | 2015-09-08 | 2015-09-08 |  |  | 2015-09-08 | 2015-09-08 | 1d |  | start no earlier than 2015-09-08 | CCB Members | 8h |  |
| 218 | 5 | **Communications** |  | 116d | 2015-03-24 | 2015-09-01 |  |  | 2015-03-24 | 2015-09-01 | 116d | 0d |  |  | 1280h |  |
| 219 | 5.1 | **DISANet** |  | 115d | 2015-03-25 | 2015-09-01 |  |  | 2015-03-25 | 2015-09-01 | 115d | 0d |  |  | 992h |  |
| 220 | 5.1.1 | Develop DISANet Message | manual | 3d | 2015-03-25 | 2015-03-27 |  |  | 2015-03-25 | 2015-03-27 | 3d |  |  | Courtney Torres; Journey Stewart; Louella Simonetti; Randle Holloway | 96h |  |
| 221 | 5.1.2 | DISANet Message Approved | manual | 1d | 2015-03-30 | 2015-03-30 |  |  | 2015-03-30 | 2015-03-30 | 1d |  |  | Mr. A. Schenck | 8h |  |
| 222 | 5.1.3 | Submit DISANet Message | manual | 1d | 2015-03-31 | 2015-03-31 |  |  | 2015-03-31 | 2015-03-31 | 1d |  |  | Carmin Mains | 8h |  |
| 223 | 5.1.4 | **Post DISANet Message** |  | 110d | 2015-04-01 | 2015-09-01 |  |  | 2015-04-01 | 2015-09-01 | 110d | 0d |  | DISA DISANet Representative | 880h |  |
| 224 | 5.1.4.1 | Post DISANet Message 1 | manual | 1d | 2015-04-01 | 2015-04-01 |  |  | 2015-04-01 | 2015-04-01 | 1d |  | start no earlier than 2015-04-01 |  |  |  |
| 225 | 5.1.4.2 | Post DISANet Message 2 | manual | 1d | 2015-05-01 | 2015-05-01 |  |  | 2015-05-01 | 2015-05-01 | 1d |  | start no earlier than 2015-05-01 |  |  |  |
| 226 | 5.1.4.3 | Post DISANet Message 3 | manual | 1d | 2015-06-01 | 2015-06-01 |  |  | 2015-06-01 | 2015-06-01 | 1d |  | start no earlier than 2015-06-01 |  |  |  |
| 227 | 5.1.4.4 | Post DISANet Message 4 | manual | 1d | 2015-07-01 | 2015-07-01 |  |  | 2015-07-01 | 2015-07-01 | 1d |  | start no earlier than 2015-07-01 |  |  |  |
| 228 | 5.1.4.5 | Post DISANet Message 5 | manual | 1d | 2015-08-01 | 2015-08-01 |  |  | 2015-08-01 | 2015-08-01 | 1d |  | start no earlier than 2015-08-01 |  |  |  |
| 229 | 5.1.4.6 | Post DISANet Message 6 | manual | 1d | 2015-09-01 | 2015-09-01 |  |  | 2015-09-01 | 2015-09-01 | 1d |  | start no earlier than 2015-09-01 |  |  |  |

| ID | WBS | Task | Type | Duration | Start | Finish | Baseline start | Baseline finish | Baseline duration | Total slack | Resources | Work |
| --- | --- | --- | --- | --- | --- | --- | --- | --- | --- | --- | --- | --- |
| 230 | 5.2 | **DATELine DISA** |  | 6d | 2015-03-26 | 2015-04-02 | 2015-03-26 | 2015-04-02 | 6d | 0d |  | 152h |
| 231 | 5.2.1 | Develop DATELine DISA Message | manual | 4d | 2015-03-26 | 2015-03-31 | 2015-03-26 | 2015-03-31 | 4d |  | Courtney Torres; Journey Stewart; Louella Simonetti; Randle Holloway | 128h |
| 232 | 5.2.2 | DATELine DISA Message Approved | manual | 1d | 2015-04-01 | 2015-04-01 | 2015-04-01 | 2015-04-01 | 1d |  | Mr. A. Schenck | 8h |
| 233 | 5.2.3 | Submit DATELine DISA Message | manual | 1d | 2015-04-02 | 2015-04-02 | 2015-04-02 | 2015-04-02 | 1d |  | Carmin Mains | 8h |
| 234 | 5.2.4 | Post DATELine Message | manual | 1d | 2015-04-02 | 2015-04-02 | 2015-04-02 | 2015-04-02 | 1d |  | DATELine DISA Representative | 8h |
| 235 | 5.3 | **EPM Live CoP** |  | 6d | 2015-03-24 | 2015-03-31 | 2015-03-24 | 2015-03-31 | 6d | 0d |  | 136h |
| 236 | 5.3.1 | Develop Requirement | manual | 2d | 2015-03-24 | 2015-03-25 | 2015-03-24 | 2015-03-25 | 2d |  | Courtney Torres; Journey Stewart; Keyona McFarland; Randle Holloway | 64h |
| 237 | 5.3.2 | Generate SharePoint Portal - Template | manual | 1d | 2015-03-26 | 2015-03-26 | 2015-03-26 | 2015-03-26 | 1d |  | Keyona McFarland | 8h |
| 238 | 5.3.3 | Generate SharePoint Portal - Configuration | manual | 2d | 2015-03-27 | 2015-03-30 | 2015-03-27 | 2015-03-30 | 2d |  | Keyona McFarland | 16h |
| 239 | 5.3.4 | Set Permissions | manual | 1d | 2015-03-30 | 2015-03-30 | 2015-03-30 | 2015-03-30 | 1d |  | Keyona McFarland | 8h |
| 240 | 5.3.5 | Test SharePoint Portal | manual | 1d | 2015-03-31 | 2015-03-31 | 2015-03-31 | 2015-03-31 | 1d |  | Courtney Torres; Journey Stewart; Randle Holloway; Keyona McFarland | 32h |
| 241 | 5.3.6 | Launch SharePoint Portal | milestone, manual | 1d | 2015-03-31 | 2015-03-31 | 2015-03-31 | 2015-03-31 | 1d |  | Keyona McFarland | 8h |
